# E4 - PLOG - PBI - V7

Schedule from MS Project, 2025-10-14 to 2025-12-02, status date 2025-10-22, A marks actual dates.

## Calendars

- Standard: Mon-Fri 08:00-12:00, 13:00-17:00; Sat-Sun off. Exceptions (off unless hours are given): 2025-11-17 (Revolución).

## Schedule

| ID | WBS | Task | Type | Duration | Start | Finish | Predecessors | Complete | Remaining | Total slack | Free slack |
| --- | --- | --- | --- | --- | --- | --- | --- | --- | --- | --- | --- |
| 1 | 1 | **PLOG - Power BI** |  | 35d | 2025-10-14 A | 2025-12-02 |  | 30% | 24.52d | 0d |  |
| 2 | 1.1 | Diseño de tableros |  | 3d | 2025-10-14 A | 2025-10-16 A |  | 100% |  |  |  |
| 3 | 1.2 | **Generar tableros** |  | 25d | 2025-10-14 A | 2025-11-18 |  | 31% | 17.21d | 0d |  |
| 4 | 1.2.1 | **Tablero de Ventas** |  | 15d | 2025-10-14 A | 2025-11-03 |  | 77% | 3.5d | 10d | 0d |
| 5 | 1.2.1.1 | Conexion de postgres |  | 3d | 2025-10-14 A | 2025-10-16 A | 2SS | 100% |  |  |  |
| 6 | 1.2.1.2 | Construir tablero |  | 10d | 2025-10-17 A | 2025-10-30 | 5 | 85% | 1.5d | 10d | 0d |
| 7 | 1.2.1.3 | Despliegue de Tablero |  | 2d | 2025-10-31 | 2025-11-03 | 6 |  |  | 10d | 0d |
| 8 | 1.2.1.4 | Tablero de Ventas Desplegado | milestone | 0d | 2025-11-03 | 2025-11-03 | 7 |  |  | 10d |  |
| 9 | 1.2.2 | **Tablero de Finanzas** |  | 16d | 2025-10-21 A | 2025-11-11 | 4SS+5d | 70% | 4.75d | 4d | 0d |
| 10 | 1.2.2.1 | Conexion de postgres |  | 3d | 2025-10-21 A | 2025-10-23 A |  | 100% |  |  |  |
| 11 | 1.2.2.2 | Construir tablero |  | 11d | 2025-10-24 A | 2025-11-07 | 10 | 75% | 2.75d | 4d | 0d |
| 12 | 1.2.2.3 | Despliegue de Tablero |  | 2d | 2025-11-10 | 2025-11-11 | 11 |  |  | 4d | 0d |
| 13 | 1.2.2.4 | Tablero de Finanzas Desplegado | milestone | 0d | 2025-11-11 | 2025-11-11 | 12 |  |  | 4d |  |
| 14 | 1.2.3 | **Tablero de Rendimiento** |  | 16d | 2025-10-21 | 2025-11-11 | 9SS |  |  | 4d | 0d |
| 15 | 1.2.3.1 | Conexion de postgres |  | 3d | 2025-10-21 | 2025-10-23 |  |  |  | 4d | 0d |
| 16 | 1.2.3.2 | Construir tablero |  | 11d | 2025-10-24 | 2025-11-07 | 15 |  |  | 4d | 0d |
| 17 | 1.2.3.3 | Despliegue de Tablero |  | 2d | 2025-11-10 | 2025-11-11 | 16 |  |  | 4d | 0d |
| 18 | 1.2.3.4 | Tablero de Rendimiento Desplegado | milestone | 0d | 2025-11-11 | 2025-11-11 | 17 |  |  | 4d |  |
| 19 | 1.2.4 | **Tablero de Selfservices** |  | 16d | 2025-10-21 | 2025-11-11 | 14SS |  |  | 0d |  |
| 20 | 1.2.4.1 | Conexion de postgres |  | 3d | 2025-10-21 | 2025-10-23 |  |  |  | 0d |  |
| 21 | 1.2.4.2 | Construir tablero |  | 11d | 2025-10-24 | 2025-11-07 | 20 |  |  | 0d |  |
| 22 | 1.2.4.3 | Despliegue de Tablero |  | 2d | 2025-11-10 | 2025-11-11 | 21 |  |  | 4d | 0d |
| 23 | 1.2.4.4 | Tablero de Selfservices Desplegado | milestone | 0d | 2025-11-11 | 2025-11-11 | 22 |  |  | 4d |  |
| 24 | 1.2.5 | **Tablero RH** |  | 10d | 2025-11-04 | 2025-11-18 |  |  |  | 0d |  |
| 25 | 1.2.5.1 | Elaboracion de Plantillas |  | 1d | 2025-11-04 | 2025-11-04 | 21SS+7d |  |  | 0d |  |
| 26 | 1.2.5.2 | Carga historica |  | 3d | 2025-11-05 | 2025-11-07 | 25 |  |  | 0d |  |
| 27 | 1.2.5.3 | Construir tablero |  | 5d | 2025-11-10 | 2025-11-14 | 26 |  |  | 0d |  |
| 28 | 1.2.5.4 | Despliegue de Tablero |  | 1d | 2025-11-18 | 2025-11-18 | 27 |  |  | 0d |  |
| 29 | 1.2.5.5 | Tablero de RH Desplegado | milestone | 0d | 2025-11-18 | 2025-11-18 | 28 |  |  | 0d |  |
| 30 | 1.3 | Validación general con cliente |  | 5d | 2025-11-19 | 2025-11-25 | 3 |  |  | 0d |  |
| 31 | 1.4 | Documentación técnica / despliegue local |  | 5d | 2025-11-26 | 2025-12-02 | 30 |  |  | 0d |  |
| 32 | 1.5 | Fase Cerrada (ambiente local) | milestone | 0d | 2025-12-02 | 2025-12-02 | 31 |  |  | 0d |  |
